Schedule from MS Project, 2018-02-20 to 2018-08-16, costs in ريال, A marks actual dates.

## Calendars

- team: Mon-Fri 08:00-12:00, 13:00-17:00; Sat-Sun off. Exceptions (off unless hours are given): 2017-12-01 to 2019-01-23 13:00-18:00 (work, recurring), 2017-12-02 to 2019-10-13 20:00-20:30 (norm, recurring), 2017-12-02 to 2023-09-01 08:00-09:00 (weekend, recurring), 2017-12-07 to 2023-08-31 13:00-18:00 (thursdays, recurring), 2018-03-20 to 2018-04-01 13:00-17:00 (holiday).

## Resources

| Resource | Rate |
| --- | --- |
| پگاه | 147700 |
| معین | 147700 |
| درنا | 147700 |

## Schedule

| ID | WBS | Task | Type | Duration | Start | Finish | Predecessors | Complete | Remaining | Actual start | Actual finish | Baseline start | Baseline finish | Baseline duration | Total slack | Deadline | Resources | Work | Actual work | Cost | Actual cost | زمان شروع | زمان پایان |
| --- | --- | --- | --- | --- | --- | --- | --- | --- | --- | --- | --- | --- | --- | --- | --- | --- | --- | --- | --- | --- | --- | --- | --- |
| 1 | 1 | **پروژه** |  | 45d | 2018-02-20 A | 2018-08-16 |  | 68% | 14.54d |  |  | 2018-02-20 | 2018-02-26 | 1d | 0d |  |  | 526.55h | 352.58h | 81,954,521.27 | 55,890,384.61 | 96/12/1 | 97/5/25 |
| 2 | 1.1 | **فاز اوّل(تهیهٔ پروپوزال)** |  | 3d | 2018-02-20 A | 2018-03-02 A |  | 100% |  |  |  | 2018-02-20 | 2018-02-28 | 1.62d |  | 2018-03-05 |  | 40.5h | 40.5h | 7,231,185 | 7,231,185 | 96/12/1 | 96/12/11 |
| 3 | 1.1.1 | **نوشتن بخش‌ها** |  | 2.31d | 2018-02-20 A | 2018-03-01 A |  | 100% |  |  |  | 2018-02-20 | 2018-02-28 | 1.5d |  |  |  | 37.5h | 37.5h | 6,697,821 | 6,697,821 | 96/12/1 | 96/12/10 |
| 4 | 1.1.1.1 | اهداف و توجیه |  | 0.5h | 2018-02-28 A | 2018-02-28 A |  | 100% |  |  |  | 2018-02-20 | 2018-02-20 | 0.5h |  |  | معین | 0.5h | 0.5h | 92,313 | 92,313 | 96/12/9 | 96/12/9 |
| 5 | 1.1.1.2 | معرفی و مفاد قرارداد |  | 4h | 2018-02-27 A | 2018-02-28 A |  | 100% |  |  |  | 2018-02-27 | 2018-02-28 | 4h |  |  | پگاه | 4h | 4h | 738,504 | 738,504 | 96/12/8 | 96/12/9 |
| 6 | 1.1.1.3 | **معرفی سیستم و توضیح تکنولوژی** |  | 1.5d | 2018-02-20 A | 2018-02-24 A |  | 100% |  |  |  | 2018-02-20 | 2018-02-26 | 1d |  |  |  | 8h | 8h | 1,477,008 | 1,477,008 | 96/12/1 | 96/12/5 |
| 7 | 1.1.1.3.1 | تهیه گزینه راه حل‌های تکنولوژی |  | 4h | 2018-02-20 A | 2018-02-21 A |  | 100% |  |  |  | 2018-02-20 | 2018-02-21 | 4h |  |  | معین | 4h | 4h | 738,504 | 738,504 | 96/12/1 | 96/12/2 |
| 8 | 1.1.1.3.2 | امکان سنجی گزینه ها |  | 2h | 2018-02-21 A | 2018-02-22 A | 7 | 100% |  |  |  | 2018-02-21 | 2018-02-22 | 2h |  |  | معین | 2h | 2h | 369,252 | 369,252 | 96/12/2 | 96/12/3 |
| 9 | 1.1.1.3.3 | انتخاب گزینه راه حل نهایی |  | 2h | 2018-02-22 A | 2018-02-24 A | 8 | 100% |  |  |  | 2018-02-23 | 2018-02-26 | 2h |  |  | معین | 2h | 2h | 369,252 | 369,252 | 96/12/3 | 96/12/5 |
| 10 | 1.1.1.4 | **پوشش نیازمندی‌های کارکردی و غیرکارکردی** |  | 0.69d | 2018-02-27 A | 2018-03-01 A |  | 100% |  |  |  | 2018-02-20 | 2018-02-28 | 1.25d |  |  |  | 4h | 4h | 738,504 | 738,504 | 96/12/8 | 96/12/10 |
| 11 | 1.1.1.4.1 | نیازمندی‌های کارکردی |  | 2h | 2018-02-28 A | 2018-03-01 A | 5 | 100% |  |  |  | 2018-02-27 | 2018-02-28 | 2h |  |  | پگاه | 2h | 2h | 369,252 | 369,252 | 96/12/9 | 96/12/10 |
| 12 | 1.1.1.4.2 | نیازمندی‌های غیرکارکردی |  | 2h | 2018-02-27 A | 2018-02-28 A |  | 100% |  |  |  | 2018-02-20 | 2018-02-21 | 2h |  |  | معین | 2h | 2h | 369,252 | 369,252 | 96/12/8 | 96/12/9 |
| 13 | 1.1.1.5 | برآورد زمانی |  | 4h | 2018-02-20 A | 2018-02-21 A |  | 100% |  |  |  | 2018-02-20 | 2018-02-21 | 4h |  |  | درنا | 4h | 4h | 656,448 | 656,448 | 96/12/1 | 96/12/2 |
| 14 | 1.1.1.6 | برآوردمالی |  | 5h | 2018-02-21 A | 2018-02-26 A | 13 | 100% |  |  |  | 2018-02-21 | 2018-02-28 | 5h |  |  | درنا | 5h | 5h | 820,560 | 820,560 | 96/12/2 | 96/12/7 |
| 15 | 1.1.1.7 | مراحل اجرای پروژه |  | 2h | 2018-02-27 A | 2018-02-28 A | 14 | 100% |  |  |  | 2018-02-20 | 2018-02-21 | 2h |  |  | درنا | 2h | 2h | 328,224 | 328,224 | 96/12/8 | 96/12/9 |
| 16 | 1.1.1.8 | معرفی اعضای گروه |  | 1d | 2018-02-20 A | 2018-02-24 A |  | 100% |  |  |  | 2018-02-20 | 2018-02-26 | 1d |  |  | پگاه | 8h | 8h | 1,477,008 | 1,477,008 | 96/12/1 | 96/12/5 |
| 17 | 1.1.1.9 | بیان نمرات اضافی |  | 2h | 2018-02-28 A | 2018-02-28 A |  | 100% |  |  |  | 2018-02-20 | 2018-02-21 | 2h |  |  | معین | 2h | 2h | 369,252 | 369,252 | 96/12/9 | 96/12/9 |
| 18 | 1.1.2 | بازخوانی و تصحیح پروپوزال و آماده سازی نسخه نهایی |  | 1h | 2018-03-01 A | 2018-03-02 A | 3 | 100% |  |  |  | 2018-02-28 | 2018-02-28 | 1h |  |  | پگاه; درنا; معین | 3h | 3h | 533,364 | 533,364 | 96/12/10 | 96/12/11 |
| 19 | 1.1.3 | ارسال نسخه نهایی | milestone | 0h | 2018-03-02 A | 2018-03-02 A | 18 | 100% |  |  |  | 2018-02-28 | 2018-02-28 | 0h |  |  | پگاه |  |  |  |  | 96/12/11 | 96/12/11 |
| 20 | 1.2 | **فاز دوم(ساختار شکست کار)** |  | 3.66d | 2018-03-02 A | 2018-03-20 | 19 | 100% |  |  | 2018-03-14 | 2018-02-28 | 2018-03-21 | 2.91d |  | 2018-03-30 |  | 23.14h | 23.14h | 4,041,253 | 4,041,253 | 96/12/11 | 96/12/29 |
| 21 | 1.2.1 | **یادگیری** |  | 0.62d | 2018-03-02 A | 2018-03-07 A |  | 100% |  |  |  | 2018-02-28 | 2018-03-08 | 1.12d |  |  |  | 11.89h | 11.89h | 2,084,220 | 2,084,220 | 96/12/11 | 96/12/16 |
| 22 | 1.2.1.1 | یادگیری گیت |  | 3h | 2018-03-02 A | 2018-03-07 A |  | 100% |  |  |  | 2018-02-28 | 2018-03-05 | 3h |  |  | درنا | 3h | 3h | 443,100 | 443,100 | 96/12/11 | 96/12/16 |
| 23 | 1.2.1.2 | یادگیری کار با project libre |  | 5h | 2018-03-02 A | 2018-03-07 A |  | 100% |  |  |  | 2018-02-28 | 2018-03-08 | 9h |  |  | معین [88.9%]; پگاه [88.9%] | 8.89h | 8.89h | 1,641,120 | 1,641,120 | 96/12/11 | 96/12/16 |
| 24 | 1.2.2 | **اجرا** |  | 10.25h | 2018-03-12 | 2018-03-20 |  | 100% |  | 2018-03-08 | 2018-03-14 | 2018-03-12 | 2018-03-21 | 1.53d |  |  |  | 11.25h | 11.25h | 1,957,033 | 1,957,033 | 96/12/17 | 96/12/23 |
| 25 | 1.2.2.1 | ساخت ریپازیتوری گیت |  | 0.25h | 2018-03-13 A | 2018-03-13 A |  | 100% |  |  |  | 2018-03-13 | 2018-03-13 | 0.25h |  |  | درنا | 0.25h | 0.25h | 36,925 | 36,925 | 96/12/22 | 96/12/22 |

| ID | WBS | Task | Type | Duration | Start | Finish | Predecessors | Complete | Remaining | Baseline start | Baseline finish | Baseline duration | Total slack | Free slack | Constraint | Resources | Work | Actual work | Cost | Actual cost | زمان شروع | زمان پایان |
| --- | --- | --- | --- | --- | --- | --- | --- | --- | --- | --- | --- | --- | --- | --- | --- | --- | --- | --- | --- | --- | --- | --- |
| 26 | 1.2.2.2 | **ساخت wbs** |  | 1.62d | 2018-03-08 A | 2018-03-14 A |  | 100% |  | 2018-03-12 | 2018-03-15 | 0.75d |  |  |  |  | 11h | 11h | 1,920,108 | 1,920,108 | 96/12/17 | 96/12/23 |
| 27 | 1.2.2.2.1 | **مشخص کردن کارها و وظایف** |  | 1.5d | 2018-03-08 A | 2018-03-14 A |  | 100% |  | 2018-03-12 | 2018-03-14 | 0.62d |  |  |  |  | 8h | 8h | 1,477,008 | 1,477,008 | 96/12/17 | 96/12/23 |
| 28 | 1.2.2.2.1.1 | نوشتن کارها و وظایف |  | 7h | 2018-03-08 A | 2018-03-14 A | 23 | 100% |  | 2018-03-12 | 2018-03-14 | 4h |  |  | start no later than 2018-03-08 | پگاه | 7h | 7h | 1,292,382 | 1,292,382 | 96/12/17 | 96/12/23 |
| 29 | 1.2.2.2.1.2 | ریویو |  | 1h | 2018-03-14 A | 2018-03-14 A | 28, 31 | 100% |  | 2018-03-14 | 2018-03-14 | 1h |  |  |  | پگاه | 1h | 1h | 184,626 | 184,626 | 96/12/23 | 96/12/23 |
| 30 | 1.2.2.2.2 | تمیزکاری و زیبا کردن |  | 1h | 2018-03-14 A | 2018-03-14 A | 29 | 100% |  | 2018-03-14 | 2018-03-15 | 1h |  |  |  | پگاه | 1h | 1h | 147,700 | 147,700 | 96/12/23 | 96/12/23 |
| 31 | 1.2.2.2.3 | اضافه کردن تقویم شمسی |  | 2h | 2018-03-13 A | 2018-03-14 A |  | 100% |  | 2018-03-13 | 2018-03-14 | 2h |  |  |  | معین | 2h | 2h | 295,400 | 295,400 | 96/12/22 | 96/12/23 |
| 32 | 1.2.2.3 | فرستادن WBS | milestone | 0h | 2018-03-14 A | 2018-03-14 A | 26 | 100% |  | 2018-03-15 | 2018-03-15 | 0h |  |  |  |  |  |  |  |  | 96/12/23 | 96/12/23 |
| 33 | 1.3 | **فاز سوم و چهارم** |  | 12.66d | 2018-03-20 A | 2018-04-27 A | 20 | 100% |  | 2018-02-20 | 2018-03-28 | 8.5d? |  |  |  |  | 122.41h | 122.41h | 20,020,973.27 | 20,020,973.27 | 96/12/29 | 97/2/7 |
| 34 | 1.3.1 | **یادگیری** |  | 2d | 2018-03-20 A | 2018-03-24 A |  | 100% |  | 2018-03-21 | 2018-03-25 | 2d |  |  |  |  | 24h | 24h | 3,692,504 | 3,692,504 | 96/12/29 | 97/1/4 |
| 35 | 1.3.1.1 | یادآوری درست نوشتن و کشیدن یوزکیس |  | 4h | 2018-03-20 A | 2018-03-21 A |  | 100% |  | 2018-03-21 | 2018-03-22 | 4h |  |  |  | معین | 4h | 4h | 738,504 | 738,504 | 96/12/29 | 97/1/1 |
| 36 | 1.3.1.2 | یادگرفتن کار با ابزار وایرفریم درست کردن |  | 16h | 2018-03-20 A | 2018-03-24 A |  | 100% |  | 2018-03-21 | 2018-03-25 | 16h |  |  |  | درنا | 16h | 16h | 2,363,200 | 2,363,200 | 96/12/29 | 97/1/4 |
| 37 | 1.3.1.3 | یاد گرفتن سلنیوم |  | 4h | 2018-03-20 A | 2018-03-21 A |  | 100% |  | 2018-03-21 | 2018-03-25 | 16h |  |  |  | پگاه | 4h | 4h | 590,800 | 590,800 | 96/12/29 | 97/1/1 |
| 38 | 1.3.2 | **اجرا** |  | 12.66d | 2018-03-20 A | 2018-04-27 A |  | 100% |  | 2018-02-20 | 2018-02-28 | 1.25d? |  |  |  |  | 98.41h | 98.41h | 16,328,469.27 | 16,328,469.27 | 96/12/29 | 97/2/7 |
| 39 | 1.3.2.1 | دقیق‌تر کردن نیازمندی‌های پروپوزال |  | 2h | 2018-03-26 A | 2018-03-27 A |  | 100% |  | 2018-02-20 | 2018-02-21 | 2h |  |  |  | درنا | 2h | 2h | 328,224 | 328,224 | 97/1/6 | 97/1/7 |
| 40 | 1.3.2.2 | نوشتن یوزکیس‌ها |  | 17.4h | 2018-03-27 A | 2018-03-31 A | 39, 35 | 100% |  | 2018-02-20 | 2018-03-03 | 15h |  |  |  | معین; پگاه | 28.5h | 28.5h | 5,261,841 | 5,261,841 | 97/1/7 | 97/1/11 |
| 41 | 1.3.2.3 | درست کردن داک نیازمندی‌ها و یوزکیس‌ها |  | 12h | 2018-04-22 A | 2018-04-27 A | 40 | 100% |  | 2018-02-20 | 2018-02-21 | 4h |  |  | finish no earlier than 2018-04-27 | پگاه [18.2%] | 0.91h | 0.91h | 167,841.82 | 167,841.82 | 97/2/2 | 97/2/7 |
| 42 | 1.3.2.4 | نوشتن سناریوهای تست |  | 49.51h | 2018-04-03 A | 2018-04-27 A | 40SS | 100% |  | 2018-02-20 | 2018-03-07 | 18h |  |  | finish no earlier than 2018-05-02 | درنا; پگاه | 40h | 40h | 6,527,273.46 | 6,527,273.46 | 97/1/14 | 97/2/7 |
| 43 | 1.3.2.5 | **پیاده‌سازی وایرفریم** |  | 8.66d | 2018-03-20 A | 2018-04-11 A |  | 100% |  | 2018-02-20 | 2018-03-28 | 8.5d |  |  |  |  | 27h | 27h | 4,043,289 | 4,043,289 | 96/12/29 | 97/1/22 |
| 44 | 1.3.2.5.1 | طراحی |  | 11.5h | 2018-03-20 A | 2018-03-26 A |  | 100% |  | 2018-02-20 | 2018-03-07 | 18h |  |  |  | معین; درنا | 11.5h | 11.5h | 1,753,939 | 1,753,939 | 96/12/29 | 97/1/6 |
| 45 | 1.3.2.5.2 | پیاده‌سازی |  | 7.75h | 2018-03-26 A | 2018-04-11 A | 44, 36 | 100% |  | 2018-02-27 | 2018-03-28 | 60h |  |  |  | پگاه; معین | 15.5h | 15.5h | 2,289,350 | 2,289,350 | 97/1/6 | 97/1/22 |
| 46 | 1.4 | **فاز پنجم(پیاده‌سازی و تست)** |  | 26.94d | 2018-04-25 A | 2018-08-16 | 33 | 50% | 13.6d |  |  |  | 0d |  |  |  | 340.5h | 166.53h | 50,661,110 | 24,596,973.33 | 97/2/5 | 97/5/25 |
| 47 | 1.4.1 | **یادگیری** |  | 3.06d | 2018-04-25 A | 2018-05-06 |  | 90% | 0.3d |  |  |  | 3.88d |  |  |  | 20.5h | 19.83h | 3,027,850 | 2,929,383.33 | 97/2/5 | 97/2/16 |
| 48 | 1.4.1.1 | یادگیری جنگو |  | 20h | 2018-04-25 A | 2018-05-06 |  | 90% | 2h |  |  |  | 3.88d | 2d |  | پگاه; معین | 20h | 19.33h | 2,954,000 | 2,855,533.33 | 97/2/5 | 97/2/16 |
| 49 | 1.4.1.2 | یادآوری postgres |  | 0.5h | 2018-04-27 A | 2018-04-27 A |  | 100% |  |  |  |  |  |  | start no earlier than 2018-04-24 | معین | 0.5h | 0.5h | 73,850 | 73,850 | 97/2/7 | 97/2/7 |

| ID | WBS | Task | Duration | Start | Finish | Predecessors | Complete | Remaining | Total slack | Free slack | Constraint | Resources | Work | Actual work | Cost | Actual cost | زمان شروع | زمان پایان |
| --- | --- | --- | --- | --- | --- | --- | --- | --- | --- | --- | --- | --- | --- | --- | --- | --- | --- | --- |
| 50 | 1.4.2 | **اجرا** | 24.19d | 2018-04-25 A | 2018-08-05 |  | 50% | 11.99d | 0d |  |  |  | 286h | 146.7h | 42,611,460 | 21,667,590 | 97/2/5 | 97/5/14 |
| 51 | 1.4.2.1 | **اجرای سمت سرور** | 14.5d | 2018-05-07 A | 2018-07-06 |  | 25% | 10.91d | 0d |  |  |  | 121h | 33.7h | 17,871,700 | 4,977,490 | 97/2/17 | 97/4/15 |
| 52 | 1.4.2.1.1 | **طراحی ER** | 1.12d | 2018-05-07 A | 2018-05-10 |  | 83% | 0.19d | 0d |  |  |  | 9h | 7.5h | 1,329,300 | 1,107,750 | 97/2/17 | 97/2/20 |
| 53 | 1.4.2.1.1.1 | طراحی اوّلیه | 6h | 2018-05-07 A | 2018-05-09 A | 48 | 100% |  |  |  |  | معین | 6h | 6h | 886,200 | 886,200 | 97/2/17 | 97/2/19 |
| 54 | 1.4.2.1.1.2 | بازبینی | 3h | 2018-05-10 A | 2018-05-10 | 53 | 50% | 1.5h | 0d |  |  | معین | 3h | 1.5h | 443,100 | 221,550 | 97/2/20 | 97/2/20 |
| 55 | 1.4.2.1.2 | **پیاده‌سازی پایگاه داده** | 0.88d | 2018-05-10 A | 2018-05-16 |  | 89% | 0.1d | 1.88d | 0d |  |  | 12h | 11.2h | 1,772,400 | 1,654,240 | 97/2/20 | 97/2/26 |
| 56 | 1.4.2.1.2.1 | پیاده‌سازی اوّلیه | 5h | 2018-05-10 A | 2018-05-15 A | 54, 40 | 100% |  |  |  |  | درنا; معین | 10h | 10h | 1,477,000 | 1,477,000 | 97/2/20 | 97/2/25 |
| 57 | 1.4.2.1.2.2 | نرمال‌سازی روابط | 2h | 2018-05-16 A | 2018-05-16 | 56 | 60% | 0.8h | 1.88d |  |  | معین | 2h | 1.2h | 295,400 | 177,240 | 97/2/26 | 97/2/26 |
| 58 | 1.4.2.1.3 | پیاده‌سازی کد پایتون | 100h | 2018-05-16 A | 2018-07-06 | 48, 55 | 15% | 85h | 0d |  |  | معین | 100h | 15h | 14,770,000 | 2,215,500 | 97/2/26 | 97/4/15 |
| 59 | 1.4.2.2 | **اجرای سمت کاربر** | 20.31d | 2018-04-25 A | 2018-07-19 |  | 79% | 4.26d | 0d |  |  |  | 105h | 83h | 15,508,500 | 12,259,100 | 97/2/5 | 97/4/28 |
| 60 | 1.4.2.2.1 | طراحی ui | 20h | 2018-05-03 A | 2018-05-30 A | 48 | 100% |  |  |  |  | درنا | 20h | 20h | 2,954,000 | 2,954,000 | 97/2/13 | 97/3/9 |
| 61 | 1.4.2.2.2 | یادگیری بستر مناسب پیاده‌سازی ui | 20h | 2018-04-25 A | 2018-05-16 A |  | 100% |  |  |  |  | پگاه | 20h | 20h | 2,954,000 | 2,954,000 | 97/2/5 | 97/2/26 |
| 62 | 1.4.2.2.3 | شروع پیاده‌سازی ui | 25h | 2018-05-30 A | 2018-06-13 A | 60, 61 | 100% |  |  |  |  | درنا | 25h | 25h | 3,692,500 | 3,692,500 | 97/3/9 | 97/3/23 |
| 63 | 1.4.2.2.4 | پیاده‌سازی ui | 40h | 2018-06-13 A | 2018-07-19 | 61SS+1d, 60, 58, 62 | 45% | 22h | 0d |  |  | پگاه | 40h | 18h | 5,908,000 | 2,658,600 | 97/3/23 | 97/4/28 |
| 64 | 1.4.2.3 | بهبود و دیباگ تست‌ها | 50h | 2018-05-23 A | 2018-08-05 |  | 60% | 20h | 0d |  | start no earlier than 2018-07-13 | پگاه | 50h | 30h | 7,385,000 | 4,431,000 | 97/3/2 | 97/5/14 |
| 65 | 1.4.2.4 | دیپلوی آزمایشی | 10h | 2018-07-14 | 2018-07-19 | 63SS |  |  | 3.75d |  | start no earlier than 2018-07-14 | معین | 10h |  | 1,846,260 |  | 97/4/23 | 97/4/28 |
| 66 | 1.4.3 | **تست کار دیپلوی‌شده** | 2.75d | 2018-08-06 | 2018-08-16 | 59 |  |  | 0d |  |  |  | 34h |  | 5,021,800 |  | 97/5/15 | 97/5/25 |
| 67 | 1.4.3.1 | تست | 10h | 2018-08-06 | 2018-08-09 | 65, 64 |  |  | 0d |  |  | درنا | 10h |  | 1,477,000 |  | 97/5/15 | 97/5/18 |
| 68 | 1.4.3.2 | رفع اشکال | 12h | 2018-08-09 | 2018-08-16 | 67 |  |  | 0d |  | start no earlier than 2018-06-21 | معین; درنا | 24h |  | 3,544,800 |  | 97/5/18 | 97/5/25 |
